# 01-versie 2

Schedule from MS Project, 2025-10-30 to 2026-02-17, status date 2025-11-24, costs in €, A marks actual dates.

## Calendars

- Standard: Mon-Fri 08:00-12:00, 13:00-17:00; Sat-Sun off.

## Resources

| Resource | Unit | Rate |
| --- | --- | --- |
| Quinn |  | 40 |
| Elara |  | 50 |
| Zephyr |  | 60 |
| Lyra |  | 55 |
| Kael |  | 45 |
| Google Cloud Licentie | licentie | 3500 |
| Monday PM Licentie | licentie | 350 |
| Ipad Pro | stuk | 800 |

## Schedule

| ID | WBS | Task | Type | Duration | Start | Finish | Predecessors | Complete | Remaining | Baseline start | Baseline finish | Baseline duration | Total slack | Free slack | Resources | Work | Actual work | Cost | Baseline cost | Actual cost |
| --- | --- | --- | --- | --- | --- | --- | --- | --- | --- | --- | --- | --- | --- | --- | --- | --- | --- | --- | --- | --- |
| 1 | 1 | **Aerocoach** |  | 78.94d | 2025-10-30 A | 2026-02-17 |  | 18% | 64.38d | 2025-10-30 | 2026-02-17 | 78.94d | 0d |  |  | 1271.33h | 255.33h | 70,830 | 70,830 | 20,450 |
| 2 | 1.1 | **Analysefase** |  | 14.77d | 2025-10-30 A | 2025-11-19 A |  | 100% |  | 2025-10-30 | 2025-11-19 | 14.77d |  |  |  | 183.33h | 183.33h | 16,730 | 16,730 | 16,730 |
| 3 | 1.1.1 | Behoefteanalyse |  | 3.33d | 2025-10-30 A | 2025-11-04 A |  | 100% |  | 2025-10-30 | 2025-11-04 | 3.33d |  |  | Quinn; Elara; Zephyr | 80h | 80h | 4,000 | 4,000 | 4,000 |
| 4 | 1.1.2 | Projectopzet |  | 8d | 2025-11-04 A | 2025-11-17 A | 3 | 100% |  | 2025-11-04 | 2025-11-17 | 8d |  |  | Quinn | 64h | 64h | 2,560 | 2,560 | 2,560 |
| 5 | 1.1.3 | Software licenties regelen |  | 2d | 2025-11-17 A | 2025-11-19 A | 4 | 100% |  | 2025-11-17 | 2025-11-19 | 2d |  |  | Zephyr; Google Cloud Licentie [2 /licentie]; Monday PM Licentie [3 /licentie] | 15.33h | 15.33h | 8,970 | 8,970 | 8,970 |
| 6 | 1.1.4 | Conceptuele schetsen |  | 3d | 2025-11-04 A | 2025-11-07 A | 3 | 100% |  | 2025-11-04 | 2025-11-07 | 3d |  |  | Elara | 24h | 24h | 1,200 | 1,200 | 1,200 |
| 7 | 1.1.5 | Einde analysefase | milestone | 0d | 2025-11-19 A | 2025-11-19 A | 5, 6 | 100% |  | 2025-11-19 | 2025-11-19 | 0d |  |  |  |  |  |  |  |  |
| 8 | 1.2 | **Avio feature fase** |  | 39.19d | 2025-11-20 A | 2026-01-14 |  | 8% | 36.25d | 2025-11-20 | 2026-01-14 | 39.19d | 0d |  |  | 408h | 24h | 18,500 | 18,500 | 960 |
| 9 | 1.2.1 | Datamodel ontwerpen |  | 12d | 2025-11-20 A | 2025-12-08 | 7 | 25% | 9d | 2025-11-20 | 2025-12-08 | 12d | 0d |  | Quinn | 96h | 24h | 3,840 | 3,840 | 960 |
| 10 | 1.2.2 | Coderen voor stakeholder A |  | 16d | 2025-12-08 | 2026-01-14 | 9 |  |  | 2025-12-08 | 2026-01-14 | 16d | 0d |  | Quinn; Ipad Pro [1 /stuk] | 128h |  | 5,920 | 5,920 |  |
| 11 | 1.2.3 | Coderen voor stakeholder B |  | 12d | 2025-12-08 | 2026-01-07 | 9 |  |  | 2025-12-08 | 2026-01-07 | 12d | 4.69d |  | Elara; Kael | 184h |  | 8,740 | 8,740 |  |
| 12 | 1.2.4 | Einde avio feature fase | milestone | 0d | 2026-01-14 | 2026-01-14 | 10, 11 |  |  | 2026-01-14 | 2026-01-14 | 0d | 0d |  |  |  |  |  |  |  |
| 13 | 1.3 | **DataFlight feature fase** |  | 38.19d | 2025-11-20 A | 2026-01-13 |  | 15% | 32.46d | 2025-11-20 | 2026-01-08 | 35.19d | 25.75d |  |  | 320h | 48h | 18,680 | 18,680 | 2,760 |
| 14 | 1.3.1 | Ontwerpen backend fuctionaliteit |  | 9d | 2025-11-20 A | 2025-12-03 | 7 | 33% | 6d | 2025-11-20 | 2025-12-03 | 9d | 54.75d |  | Lyra | 72h | 24h | 3,960 | 3,960 | 1,320 |
| 15 | 1.3.2 | Configureren API verbinding |  | 14d | 2025-11-20 A | 2025-12-10 | 7 | 21% | 11d | 2025-11-20 | 2025-12-10 | 14d | 1.25d | 0.06d | Zephyr | 112h | 24h | 6,720 | 6,720 | 1,440 |
| 16 | 1.3.3 | Dataweergaven implementeren |  | 4d | 2025-12-10 | 2025-12-16 | 15 |  |  | 2025-12-10 | 2025-12-16 | 4d | 17.5d | 16.5d | Lyra | 32h |  | 1,760 | 1,760 |  |
| 17 | 1.3.4 | Handleiding schrijven |  | 10d | 2025-12-10 | 2026-01-08 | 15 |  |  | 2025-12-10 | 2026-01-08 | 10d | 1d | 0d | Zephyr | 80h |  | 4,800 | 4,800 |  |
| 18 | 1.3.5 | Acceptatietesten uitvoeren |  | 3d | 2026-01-08 | 2026-01-13 | 16, 17 |  |  | 2025-12-16 | 2025-12-19 | 3d | 1d | 0d | Zephyr | 24h |  | 1,440 | 1,440 |  |
| 19 | 1.3.6 | Einde Dataflight feature fase | milestone | 0d | 2026-01-13 | 2026-01-13 | 17, 18 |  |  | 2026-01-08 | 2026-01-08 | 0d | 1d |  |  |  |  |  |  |  |
| 20 | 1.4 | **Validatiefase** |  | 24.75d | 2026-01-14 | 2026-02-17 |  |  |  | 2026-01-14 | 2026-02-17 | 24.75d | 0d |  |  | 360h |  | 16,920 | 16,920 |  |
| 21 | 1.4.1 | Validatietesten voorbereiden |  | 10d | 2026-01-14 | 2026-01-28 | 12, 19 |  |  | 2026-01-14 | 2026-01-28 | 10d | 0d |  | Kael | 80h |  | 3,600 | 3,600 |  |
| 22 | 1.4.2 | UAT-testen uitvoeren |  | 12d | 2026-01-30 | 2026-02-17 | 21FS+2d |  |  | 2026-01-30 | 2026-02-17 | 12d | 0.25d |  | Lyra | 96h |  | 5,280 | 5,280 |  |
| 23 | 1.4.3 | Bugfixes uitvoeren |  | 14d | 2026-01-28 | 2026-02-17 | 21 |  |  | 2026-01-28 | 2026-02-17 | 14d | 0d |  | Quinn | 112h |  | 4,480 | 4,480 |  |
| 24 | 1.4.4 | Kennisoverdracht |  | 3d | 2026-01-28 | 2026-02-02 | 21 |  |  | 2026-01-28 | 2026-02-02 | 3d | 9.75d | 0d | Kael | 24h |  | 1,080 | 1,080 |  |
| 25 | 1.4.5 | Overdracht naar operations |  | 2d | 2026-02-02 | 2026-02-04 | 24 |  |  | 2026-02-02 | 2026-02-04 | 2d | 9.75d |  | Kael; Elara; Zephyr | 48h |  | 2,480 | 2,480 |  |
| 26 | 1.4.6 | Einde validatiefase | milestone | 0d | 2026-02-17 | 2026-02-17 | 22, 23, 25 |  |  | 2026-02-17 | 2026-02-17 | 0d | 0d |  |  |  |  |  |  |  |
| 27 | 1.5 | Einde project | milestone | 0d | 2026-02-17 | 2026-02-17 | 26 |  |  | 2026-02-17 | 2026-02-17 | 0d | 0d |  |  |  |  |  |  |  |

Notes:
- 6: De schetsen zijn aan beschikbaar op Confluence
- 18: Pas laten beginnen als hij met geen taak bezig is. Dit past perfect want de avio feature fase duurt langer dan de dataflight feature fase. Hierdoor duurt het project niet langer als we deze aanpassing doen.
- 26: Percentage voltooid: 18% duur & 20% werk
