# Bouwen van blokhut

Schedule from MS Project, 2025-10-14 to 2025-10-20, status date 2025-10-16, costs in €, A marks actual dates.

## Calendars

- Blokhut: Mon-Fri 08:30-12:30, 13:00-17:00; Sat-Sun off. Exceptions (off unless hours are given): 2025-10-16 (Sluitingsdag).

## Resources

| Resource | Unit | Rate |
| --- | --- | --- |
| Peter |  | 30 |
| Jan |  | 30 |
| Koen |  | 30 |
| Blokhut |  | 1750 |
| Zand | 10kg | 0.25 |
| Kiezel | 10kg | 0.5 |
| Cement | 50kg | 15 |

## Schedule

| ID | WBS | Task | Type | Duration | Start | Finish | Predecessors | Complete | Remaining | Baseline start | Baseline finish | Baseline duration | Total slack | Free slack | Resources | Work | Actual work | Cost | Baseline cost | Actual cost |
| --- | --- | --- | --- | --- | --- | --- | --- | --- | --- | --- | --- | --- | --- | --- | --- | --- | --- | --- | --- | --- |
| 1 | 1 | **Bouw van blokhut** |  | 3.56d | 2025-10-14 08:30 A | 2025-10-20 13:30 |  | 53% | 1.69d | 2025-10-14 08:30 | 2025-10-20 13:30 | 3.56d | 0d |  |  | 36h | 22h | 2,937.5 | 2,912.5 | 2,517.5 |
| 2 | 1.1 | **Voorbereiding** |  | 3.56d | 2025-10-14 08:30 A | 2025-10-20 13:30 |  | 53% | 1.69d | 2025-10-14 08:30 | 2025-10-20 13:30 | 3.56d | 0d |  |  | 36h | 22h | 2,937.5 | 2,912.5 | 2,517.5 |
| 3 | 1.1.1 | Onderdelen uitpakken en controleren |  | 0.75h | 2025-10-14 08:30 A | 2025-10-14 09:15 A |  | 100% |  | 2025-10-14 08:30 | 2025-10-14 09:15 | 0.75h |  |  | Jan; Koen; Blokhut | 1.5h | 1.5h | 1,795 | 1,795 | 1,795 |
| 4 | 1.1.2 | Plan bespreken met werklieden |  | 1h | 2025-10-14 09:15 A | 2025-10-14 10:15 A | 3 | 100% |  | 2025-10-14 09:15 | 2025-10-14 10:15 | 1h |  |  | Jan; Koen; Peter | 3h | 3h | 90 | 90 | 90 |
| 5 | 1.1.3 | Einde voorbereiding | milestone | 0d | 2025-10-14 10:15 A | 2025-10-14 10:15 A | 4 | 100% |  | 2025-10-14 10:15 | 2025-10-14 10:15 | 0d |  |  |  |  |  |  |  |  |
| 6 | 1.1.4 | **Fundering** |  | 1.43d | 2025-10-14 10:15 A | 2025-10-15 14:10 A |  | 100% |  | 2025-10-14 10:15 | 2025-10-15 14:10 | 1.43d |  |  |  | 7.5h | 7.5h | 322.5 | 322.5 | 322.5 |
| 7 | 1.1.4.1 | Uitgraven fundering |  | 2h | 2025-10-14 10:15 A | 2025-10-14 12:15 A | 5 | 100% |  | 2025-10-14 10:15 | 2025-10-14 12:15 | 2h |  |  | Koen; Peter; Zand [50 /10kg]; Kiezel [50 /10kg]; Cement [4 /50kg] | 4h | 4h | 217.5 | 217.5 | 217.5 |
| 8 | 1.1.4.2 | Plaatsen bekisting |  | 0.5h | 2025-10-14 12:15 A | 2025-10-14 13:15 A | 7 | 100% |  | 2025-10-14 12:15 | 2025-10-14 13:15 | 0.5h |  |  | Koen; Peter | 1h | 1h | 30 | 30 | 30 |
| 9 | 1.1.4.3 | Beton storten |  | 0.67h | 2025-10-14 13:15 A | 2025-10-14 13:55 A | 8 | 100% |  | 2025-10-14 13:15 | 2025-10-14 13:55 | 0.67h |  |  | Koen; Jan; Peter | 2h | 2h | 60 | 60 | 60 |
| 10 | 1.1.4.4 | Verwijderen bekisting |  | 0.25h | 2025-10-15 13:55 A | 2025-10-15 14:10 A | 9FS+1d | 100% |  | 2025-10-15 13:55 | 2025-10-15 14:10 | 0.25h |  |  | Koen; Jan | 0.5h | 0.5h | 15 | 15 | 15 |
| 11 | 1.1.4.5 | Einde fundering | milestone | 0d | 2025-10-15 14:10 A | 2025-10-15 14:10 A | 10 | 100% |  | 2025-10-15 14:10 | 2025-10-15 14:10 | 0d |  |  |  |  |  |  |  |  |
| 12 | 1.1.5 | **Wanden** |  | 0.15d | 2025-10-15 14:10 A | 2025-10-15 15:20 A |  | 100% |  | 2025-10-15 14:10 | 2025-10-15 15:20 | 0.15d |  |  |  | 3.5h | 3.5h | 115 | 105 | 115 |
| 13 | 1.1.5.1 | Basislaag planken plaatsen |  | 0.33h | 2025-10-15 14:10 A | 2025-10-15 14:30 A | 11 | 100% |  | 2025-10-15 14:10 | 2025-10-15 14:30 | 0.33h |  |  | Koen; Jan; Peter | 1h | 1h | 40 | 30 | 40 |
| 14 | 1.1.5.2 | Overige planken plaatsen |  | 0.67h | 2025-10-15 14:30 A | 2025-10-15 15:10 A | 13 | 100% |  | 2025-10-15 14:30 | 2025-10-15 15:10 | 0.67h |  |  | Koen; Jan; Peter | 2h | 2h | 60 | 60 | 60 |
| 15 | 1.1.5.3 | Blokhut verankeren op fundering |  | 0.17h | 2025-10-15 15:10 A | 2025-10-15 15:20 A | 14 | 100% |  | 2025-10-15 15:10 | 2025-10-15 15:20 | 0.17h |  |  | Koen; Jan; Peter | 0.5h | 0.5h | 15 | 15 | 15 |
| 16 | 1.1.5.4 | Einde wanden | milestone | 0d | 2025-10-15 15:20 A | 2025-10-15 15:20 A | 15 | 100% |  | 2025-10-15 15:20 | 2025-10-15 15:20 | 0d |  |  |  |  |  |  |  |  |
| 17 | 1.1.6 | **Dak** |  | 0.27d | 2025-10-15 15:20 A | 2025-10-17 09:00 |  | 77% | 0.06d | 2025-10-15 15:20 | 2025-10-17 09:00 | 0.27d | 0.75d |  |  | 5.5h | 4.5h | 165 | 165 | 135 |
| 18 | 1.1.6.1 | Daknok- en latten bevestigen |  | 0.67h | 2025-10-15 15:20 A | 2025-10-15 16:00 A | 16 | 100% |  | 2025-10-15 15:20 | 2025-10-15 16:00 | 0.67h |  |  | Koen; Jan; Peter | 2h | 2h | 60 | 60 | 60 |
| 19 | 1.1.6.2 | Houten platen leggen op het dak |  | 0.33h | 2025-10-15 16:00 A | 2025-10-15 16:20 A | 18 | 100% |  | 2025-10-15 16:00 | 2025-10-15 16:20 | 0.33h |  |  | Koen; Jan; Peter | 1h | 1h | 30 | 30 | 30 |
| 20 | 1.1.6.3 | Roofing op lengte snijden |  | 0.17h | 2025-10-15 16:20 A | 2025-10-15 16:30 A | 19 | 100% |  | 2025-10-15 16:20 | 2025-10-15 16:30 | 0.17h |  |  | Koen; Jan; Peter | 0.5h | 0.5h | 15 | 15 | 15 |
| 21 | 1.1.6.4 | Roofing bevestigen op platen |  | 1h | 2025-10-15 16:30 A | 2025-10-17 09:00 | 20 | 50% | 0.5h | 2025-10-15 16:30 | 2025-10-17 09:00 | 1h | 0.75d | 0d | Koen; Jan | 2h | 1h | 60 | 60 | 30 |
| 22 | 1.1.6.5 | Einde dak | milestone | 0d | 2025-10-17 09:00 | 2025-10-17 09:00 | 21 |  |  | 2025-10-17 09:00 | 2025-10-17 09:00 | 0d | 0.75d | 0d |  |  |  |  |  |  |
| 23 | 1.1.7 | **Afwerking** |  | 3.16d | 2025-10-14 10:15 A | 2025-10-20 11:30 |  | 22% | 2.45d | 2025-10-14 10:15 | 2025-10-20 11:30 | 3.16d | 0d |  |  | 13.5h | 2h | 405 | 390 | 60 |
| 24 | 1.1.7.1 | Vensters klaarmaken |  | 1h | 2025-10-14 10:15 A | 2025-10-14 11:15 A | 4 | 100% |  | 2025-10-14 10:15 | 2025-10-14 11:15 | 1h |  |  | Jan | 1h | 1h | 30 | 30 | 30 |
| 25 | 1.1.7.2 | Deur klaarmaken (slot, scharnieren, …) |  | 1h | 2025-10-14 10:15 A | 2025-10-14 11:15 A | 4 | 100% |  | 2025-10-14 10:15 | 2025-10-14 11:15 | 1h |  |  | Jan | 1h | 1h | 30 | 30 | 30 |
| 26 | 1.1.7.3 | Ramen en deur plaatsen |  | 1.5h | 2025-10-17 09:00 | 2025-10-17 10:30 | 22, 24, 25 |  |  | 2025-10-17 09:00 | 2025-10-17 10:00 | 1h | 0.88d |  | Jan | 1.5h |  | 45 | 30 |  |
| 27 | 1.1.7.4 | Vloeren in de blokhut |  | 1h | 2025-10-20 08:30 | 2025-10-20 09:30 | 22 |  |  | 2025-10-20 08:30 | 2025-10-20 09:30 | 1h | 0d |  | Peter | 1h |  | 30 | 30 |  |
| 28 | 1.1.7.5 | Blokhut vernissen |  | 2.5h | 2025-10-17 09:00 | 2025-10-17 11:30 | 22 |  |  | 2025-10-17 09:00 | 2025-10-17 11:30 | 2.5h | 0.75d |  | Koen; Jan | 5h |  | 150 | 150 |  |
| 29 | 1.1.7.6 | Gazon rondom bijwerken |  | 2h | 2025-10-20 09:30 | 2025-10-20 11:30 | 26, 27, 28 |  |  | 2025-10-20 09:30 | 2025-10-20 11:30 | 2h | 0d |  | Koen; Jan | 4h |  | 120 | 120 |  |
| 30 | 1.1.7.7 | Einde afwerking | milestone | 0d | 2025-10-20 11:30 | 2025-10-20 11:30 | 29 |  |  | 2025-10-20 11:30 | 2025-10-20 11:30 | 0d | 0d |  |  |  |  |  |  |  |

| ID | WBS | Task | Type | Duration | Start | Finish | Predecessors | Baseline start | Baseline finish | Baseline duration | Total slack | Resources | Work | Cost | Baseline cost |
| --- | --- | --- | --- | --- | --- | --- | --- | --- | --- | --- | --- | --- | --- | --- | --- |
| 31 | 1.1.8 | **Oplevering** |  | 0.19d | 2025-10-20 11:30 | 2025-10-20 13:30 |  | 2025-10-20 11:30 | 2025-10-20 13:30 | 0.19d | 0d |  | 1.5h | 45 | 45 |
| 32 | 1.1.8.1 | Schoonmaken |  | 1h | 2025-10-20 11:30 | 2025-10-20 12:30 | 30 | 2025-10-20 11:30 | 2025-10-20 12:30 | 1h | 0d | Koen | 1h | 30 | 30 |
| 33 | 1.1.8.2 | Eindcontrole voor oplevering |  | 0.5h | 2025-10-20 13:00 | 2025-10-20 13:30 | 32 | 2025-10-20 13:00 | 2025-10-20 13:30 | 0.5h | 0d | Koen | 0.5h | 15 | 15 |
| 34 | 1.1.8.3 | Einde oplevering | milestone | 0d | 2025-10-20 13:30 | 2025-10-20 13:30 | 33 | 2025-10-20 13:30 | 2025-10-20 13:30 | 0d | 0d |  |  |  |  |
| 35 | 1.1.9 | Einde bouw van blokhut | milestone | 0d | 2025-10-20 13:30 | 2025-10-20 13:30 | 34 | 2025-10-20 13:30 | 2025-10-20 13:30 | 0d | 0d |  |  |  |  |

Notes:
- 31: Niet vergeten een attentie klaar te zetten voor de werklieden.
